# Project schedule

Schedule from MS Project, 2012-01-16 to 2012-04-26, 24 hours a day, costs in £, A marks actual dates.

## Calendars

- 24 Hours: Mon-Sun 00:00-24:00.

## Resources

| Resource | Rate |
| --- | --- |
| Thomas Hughes | 34.78 |
| Mark Robinson | 51.46 |
| Matt Ryder | 44.85 |
| Peter Ellsum | 52.06 |
| Client visit |  |

## Schedule

| ID | WBS | Task | Type | Duration | Start | Finish | Predecessors | Complete | Remaining | Baseline start | Baseline finish | Baseline duration | Baseline 1 start | Baseline 1 finish | Total slack | Constraint | Resources | Work | Actual work | Cost | Baseline cost | Actual cost |
| --- | --- | --- | --- | --- | --- | --- | --- | --- | --- | --- | --- | --- | --- | --- | --- | --- | --- | --- | --- | --- | --- | --- |
| 1 | 1 | **Phase 1** |  | 39.75d | 2012-01-16 A | 2012-02-24 |  | 98% | 0.71d | 2012-01-16 | 2012-02-24 | 39d | 2012-01-16 | 2012-02-24 |  |  |  | 746.98h | 739.78h | 38,458.93 | 35,972.89 | 34,835.44 |
| 2 | 1.1 | Phase 1 deadline | milestone, manual | 0d | 2012-02-24 | 2012-02-24 |  |  |  | 2012-02-24 | 2012-02-24 | 0d | 2012-02-24 | 2012-02-24 |  |  |  |  |  |  |  |  |
| 3 | 1.2 | Front cover |  | 6h | 2012-02-09 A | 2012-02-09 A | 14 | 100% |  | 2012-02-09 | 2012-02-09 | 6h |  |  |  |  | Mark Robinson [80%] | 6h | 6h | 308.76 | 308.76 | 308.76 |
| 4 | 1.3 | Quality |  | 18h | 2012-01-16 A | 2012-01-16 A |  | 100% |  | 2012-01-16 | 2012-01-16 | 18h |  |  |  |  | Mark Robinson | 18h | 18h | 926.28 | 926.28 | 926.28 |
| 5 | 1.4 | Risk analysis |  | 72h | 2012-02-15 A | 2012-02-18 | 17 | 83% | 12h | 2012-02-15 | 2012-02-18 | 72h | 2012-02-08 | 2012-02-10 | 68.33d | start no earlier than 2012-02-15 | Peter Ellsum [60%] | 64.8h | 57.6h | 3,373.49 | 3,373.49 |  |
| 6 | 1.5 | **Cost analysis** |  | 10.54d | 2012-02-05 A | 2012-02-15 A | 17 | 100% |  | 2012-02-05 | 2012-02-15 | 10.54d | 2012-02-05 | 2012-02-12 |  |  |  | 54h | 54h | 2,778.84 | 2,778.84 | 2,778.84 |
| 7 | 1.5.1 | Staff cost research |  | 6h | 2012-02-05 A | 2012-02-05 A |  | 100% |  | 2012-02-05 | 2012-02-05 | 6h | 2012-02-08 | 2012-02-10 |  |  | Mark Robinson [25%] | 6h | 6h | 308.76 | 308.76 | 308.76 |
| 8 | 1.5.2 | Office cost research |  | 6h | 2012-02-14 A | 2012-02-14 A |  | 100% |  | 2012-02-14 | 2012-02-14 | 6h |  |  |  |  | Mark Robinson [25%] | 6h | 6h | 308.76 | 308.76 | 308.76 |
| 9 | 1.5.3 | Equipment cost research |  | 6h | 2012-02-05 A | 2012-02-05 A |  | 100% |  | 2012-02-05 | 2012-02-05 | 6h | 2012-02-05 | 2012-02-07 |  |  | Mark Robinson [25%] | 6h | 6h | 308.76 | 308.76 | 308.76 |
| 10 | 1.5.4 | Equipment cost analysis |  | 12h | 2012-02-14 A | 2012-02-14 A | 9 | 100% |  | 2012-02-14 | 2012-02-14 | 12h | 2012-02-08 | 2012-02-10 |  |  | Mark Robinson [50%] | 12h | 12h | 617.52 | 617.52 | 617.52 |
| 11 | 1.5.5 | Office cost analysis |  | 12h | 2012-02-15 A | 2012-02-15 A | 8 | 100% |  | 2012-02-15 | 2012-02-15 | 12h |  |  |  |  | Mark Robinson [50%] | 12h | 12h | 617.52 | 617.52 | 617.52 |
| 12 | 1.5.6 | Staff cost analysis |  | 12h | 2012-02-14 A | 2012-02-14 A | 7 | 100% |  | 2012-02-14 | 2012-02-14 | 12h | 2012-02-10 | 2012-02-12 |  |  | Mark Robinson [75%] | 12h | 12h | 617.52 | 617.52 | 617.52 |
| 13 | 1.6 | **Problem Analysis** |  | 29.75d | 2012-01-26 A | 2012-02-24 A | 17 | 100% |  | 2012-01-26 | 2012-02-25 | 30d | 2012-02-05 | 2012-02-13 |  |  |  | 438.88h | 438.88h | 22,361.2 | 19,875.16 | 22,361.2 |
| 14 | 1.6.1 | Receive task allocation | milestone, manual | 0h | 2012-01-26 A | 2012-01-26 A | 33 | 100% |  | 2012-01-26 | 2012-01-26 | 0h | 2012-01-26 | 2012-01-26 |  |  |  |  |  |  |  |  |
| 15 | 1.6.2 | Problems/Requirements spec |  | 354h | 2012-02-10 A | 2012-02-24 A | 16 | 100% |  | 2012-02-10 | 2012-02-25 | 360h | 2012-02-11 | 2012-02-13 |  | finish no earlier than 2012-02-22 | Mark Robinson [75%]; Matt Ryder [15%]; Thomas Hughes [10%] | 434.88h | 434.88h | 22,155.36 | 19,669.32 | 22,155.36 |
| 16 | 1.6.3 | Specification analysis |  | 4h | 2012-02-05 A | 2012-02-05 A |  | 100% |  | 2012-02-05 | 2012-02-05 | 4h | 2012-02-05 | 2012-02-05 |  |  | Mark Robinson | 4h | 4h | 205.84 | 205.84 | 205.84 |
| 17 | 1.7 | **Initial team management** |  | 26.04d | 2012-01-19 A | 2012-02-14 A |  | 100% |  | 2012-01-19 | 2012-02-14 | 26.04d | 2012-01-19 | 2012-02-08 |  |  |  | 165.3h | 165.3h | 8,710.36 | 8,710.36 | 8,460.36 |
| 18 | 1.7.1 | **Skills matrix** |  | 15.79d | 2012-01-29 A | 2012-02-14 A |  | 100% |  | 2012-01-29 | 2012-02-14 | 15.79d | 2012-01-29 | 2012-02-08 |  |  |  | 82h | 82h | 4,197.03 | 4,197.03 | 4,197.03 |
| 19 | 1.7.1.1 | Peter - Fill in Matrix |  | 1h | 2012-02-14 A | 2012-02-14 A | 24 | 100% |  | 2012-02-14 | 2012-02-14 | 1h |  |  |  |  | Peter Ellsum | 1h | 1h | 52.06 | 52.06 | 52.06 |
| 20 | 1.7.1.2 | Matt -Fill in matrix |  | 0.04d | 2012-01-29 A | 2012-02-02 A | 24 | 100% |  | 2012-01-29 | 2012-02-02 | 0.04d | 2012-01-29 | 2012-02-02 |  |  | Matt Ryder | 1h | 1h | 44.85 | 44.85 | 44.85 |
| 21 | 1.7.1.3 | Tom - Fill in matrix |  | 0.04d | 2012-01-31 A | 2012-02-04 A | 24 | 100% |  | 2012-01-31 | 2012-02-04 | 0.04d | 2012-01-31 | 2012-02-04 |  |  | Thomas Hughes | 1h | 1h | 34.78 | 34.78 | 34.78 |
| 22 | 1.7.1.4 | Mark - Fill in matrix |  | 0.04d | 2012-01-29 A | 2012-02-02 A | 24 | 100% |  | 2012-01-29 | 2012-02-02 | 0.04d | 2012-01-29 | 2012-02-02 |  |  | Mark Robinson | 1h | 1h | 51.46 | 51.46 | 51.46 |
| 23 | 1.7.1.5 | Analyse matrix |  | 77h | 2012-02-04 A | 2012-02-08 A | 20, 21, 22 | 100% |  | 2012-02-04 | 2012-02-08 | 77h | 2012-02-04 | 2012-02-08 |  |  | Mark Robinson [60%] | 77h | 77h | 3,962.42 | 3,962.42 | 3,962.42 |
| 24 | 1.7.1.6 | Write matrix framework |  | 1h | 2012-01-31 A | 2012-01-31 A | 33 | 100% |  | 2012-01-31 | 2012-01-31 | 1h | 2012-01-31 | 2012-01-31 |  |  | Mark Robinson | 1h | 1h | 51.46 | 51.46 | 51.46 |
| 25 | 1.7.2 | Build initial plan |  | 77h | 2012-02-04 A | 2012-02-08 A | 33 | 100% |  | 2012-02-04 | 2012-02-08 | 77h | 2012-02-04 | 2012-02-08 |  |  | Mark Robinson [75%]; Client visit [0.1%] | 77h | 77h | 4,212.42 | 4,212.42 | 3,962.42 |

| ID | WBS | Task | Type | Duration | Start | Finish | Predecessors | Complete | Baseline start | Baseline finish | Baseline duration | Baseline 1 start | Baseline 1 finish | Total slack | Free slack | Resources | Work | Actual work | Cost | Baseline cost | Actual cost |
| --- | --- | --- | --- | --- | --- | --- | --- | --- | --- | --- | --- | --- | --- | --- | --- | --- | --- | --- | --- | --- | --- |
| 26 | 1.7.3 | **About Us document** |  | 4d | 2012-01-19 A | 2012-01-23 A | 33 | 100% | 2012-01-19 | 2012-01-23 | 4d | 2012-01-19 | 2012-01-23 |  |  |  | 6.3h | 6.3h | 300.91 | 300.91 | 300.91 |
| 27 | 1.7.3.1 | Make company logo |  | 3h | 2012-01-19 A | 2012-01-19 A |  | 100% | 2012-01-19 | 2012-01-19 | 3h |  |  |  |  | Mark Robinson | 3h | 3h | 154.38 | 154.38 | 154.38 |
| 28 | 1.7.3.2 | Bio deadline | milestone, manual | 0d | 2012-01-23 A | 2012-01-23 A |  | 100% | 2012-01-23 | 2012-01-23 | 0d | 2012-01-23 | 2012-01-23 |  |  |  |  |  |  |  |  |
| 29 | 1.7.3.3 | Matt - Write bio |  | 1h | 2012-01-19 A | 2012-01-19 A | 32 | 100% | 2012-01-19 | 2012-01-19 | 1h | 2012-01-19 | 2012-01-19 |  |  | Matt Ryder [30%] | 1h | 1h | 44.85 | 44.85 | 44.85 |
| 30 | 1.7.3.4 | Mark - Write bio |  | 1h | 2012-01-19 A | 2012-01-19 A | 32 | 100% | 2012-01-19 | 2012-01-19 | 1h | 2012-01-19 | 2012-01-19 |  |  | Mark Robinson [30%] | 1h | 1h | 51.46 | 51.46 | 51.46 |
| 31 | 1.7.3.5 | Tom - Write bio |  | 1h | 2012-01-19 A | 2012-01-19 A | 32 | 100% | 2012-01-19 | 2012-01-19 | 1h | 2012-01-19 | 2012-01-19 |  |  | Thomas Hughes [30%] | 1h | 1h | 34.78 | 34.78 | 34.78 |
| 32 | 1.7.3.6 | Write company 'about us' |  | 1h | 2012-01-19 A | 2012-01-19 A |  | 100% | 2012-01-19 | 2012-01-19 | 1h | 2012-01-19 | 2012-01-19 |  |  | Mark Robinson [30%] | 0.3h | 0.3h | 15.44 | 15.44 | 15.44 |
| 33 | 1.7.4 | Form group | milestone, manual | 0h | 2012-01-19 A | 2012-01-19 A |  | 100% | 2012-01-19 | 2012-01-19 | 0h | 2012-01-19 | 2012-01-19 |  |  | Mark Robinson; Matt Ryder; Peter Ellsum; Thomas Hughes |  |  |  |  |  |
| 34 | 2 | **Phase 2** |  | 21.33d | 2012-02-24 | 2012-03-16 |  |  | 2012-02-24 | 2012-03-16 | 21.33d | 2012-02-24 | 2012-03-16 |  |  |  | 278.4h |  | 14,081.18 | 14,081.18 |  |
| 35 | 2.1 | Phase 2 deadline | milestone, manual | 0d | 2012-03-16 | 2012-03-16 |  |  | 2012-03-16 | 2012-03-16 | 0d | 2012-03-16 | 2012-03-16 |  |  |  |  |  |  |  |  |
| 36 | 2.2 | **Handle other group's documentation** |  | 10d? | 2012-02-28 | 2012-03-09 |  |  | 2012-02-28 | 2012-03-09 | 10d? | 2012-02-24 | 2012-03-01 | 0d |  |  | 196.8h |  | 9,838.85 | 9,838.85 |  |
| 37 | 2.2.1 | Receive other group's documentation | milestone, manual | 0h | 2012-02-28 | 2012-02-28 |  |  | 2012-02-28 | 2012-02-28 | 0h | 2012-02-24 | 2012-02-25 |  |  | Mark Robinson |  |  |  |  |  |
| 38 | 2.2.2 | Analyse other group's documentation |  | 96h? | 2012-02-28 | 2012-03-03 | 37 |  | 2012-02-28 | 2012-03-03 | 96h? | 2012-02-25 | 2012-02-27 | 3.33d | 0d | Mark Robinson [55%]; Matt Ryder [25%]; Peter Ellsum [25%] | 96h |  | 4,795.92 | 4,795.92 |  |
| 39 | 2.2.3 | Compile list of ammendments |  | 96h? | 2012-03-03 | 2012-03-07 | 38 |  | 2012-03-03 | 2012-03-07 | 96h? | 2012-02-27 | 2012-02-29 | 3.33d | 0d | Mark Robinson [50%]; Matt Ryder [25%]; Peter Ellsum [25%] | 96h |  | 4,795.92 | 4,795.92 |  |
| 40 | 2.2.4 | Negotiate amendments with other group |  | 48h? | 2012-03-07 | 2012-03-09 | 39 |  | 2012-03-07 | 2012-03-09 | 48h? | 2012-02-29 | 2012-03-01 | 3.33d | 0d | Mark Robinson [10%] | 4.8h |  | 247.01 | 247.01 |  |
| 41 | 2.3 | **Feedback** |  | 15.08d? | 2012-02-28 | 2012-03-14 |  |  | 2012-02-28 | 2012-03-14 | 15.08d? | 2012-02-28 | 2012-03-02 | 0d |  |  | 9.6h |  | 494.02 | 494.02 |  |
| 42 | 2.3.1 | Receive feedback | milestone, manual | 0h | 2012-02-28 | 2012-02-28 |  |  | 2012-02-28 | 2012-02-28 | 0h | 2012-02-28 | 2012-02-29 |  |  | Mark Robinson |  |  |  |  |  |
| 43 | 2.3.2 | Analyse feedback |  | 48h? | 2012-03-12 | 2012-03-14 | 42 |  | 2012-03-12 | 2012-03-14 | 48h? | 2012-02-29 | 2012-03-02 | 2.26d |  | Mark Robinson [20%] | 9.6h |  | 494.02 | 494.02 |  |
| 44 | 2.4 | Conceptual software model |  | 96h? | 2012-03-09 | 2012-03-13 | 40 |  | 2012-03-09 | 2012-03-13 | 96h? | 2012-02-24 | 2012-02-25 | 3.33d |  | Peter Ellsum [75%] | 72h |  | 3,748.32 | 3,748.32 |  |
| 45 | 3 | **Phase 3** |  | 41.33d | 2012-03-16 | 2012-04-26 |  |  | 2012-03-16 | 2012-04-26 | 41.33d | 2012-03-16 | 2012-04-26 |  |  |  | 535.2h |  | 25,261.73 | 25,261.73 |  |
| 46 | 3.1 | **Design** |  | 4d? | 2012-03-16 | 2012-03-20 |  |  | 2012-03-16 | 2012-03-20 | 4d? | 2012-03-16 | 2012-03-18 | 21.33d | 0d |  | 108h |  | 5,247.6 | 5,247.6 |  |
| 47 | 3.1.1 | Class diagrams |  | 48h? | 2012-03-16 | 2012-03-18 | 40 |  | 2012-03-16 | 2012-03-18 | 48h? | 2012-03-16 | 2012-03-18 | 23.33d | 2d | Matt Ryder [25%]; Peter Ellsum [25%] | 24h |  | 1,162.92 | 1,162.92 |  |
| 48 | 3.1.2 | Data storage design |  | 96h? | 2012-03-16 | 2012-03-20 | 40 |  | 2012-03-16 | 2012-03-20 | 96h? | 2012-03-16 | 2012-03-18 | 21.33d | 0d | Mark Robinson [50%] | 48h |  | 2,470.08 | 2,470.08 |  |
| 49 | 3.1.3 | Navigation design |  | 48h? | 2012-03-16 | 2012-03-18 | 40 |  | 2012-03-16 | 2012-03-18 | 48h? | 2012-03-16 | 2012-03-18 | 23.33d |  | Matt Ryder [25%] | 12h |  | 538.2 | 538.2 |  |
| 50 | 3.1.4 | UI Design |  | 48h? | 2012-03-16 | 2012-03-18 | 40 |  | 2012-03-16 | 2012-03-18 | 48h? | 2012-03-16 | 2012-03-18 | 23.33d |  | Matt Ryder [50%] | 24h |  | 1,076.4 | 1,076.4 |  |

| ID | WBS | Task | Type | Duration | Start | Finish | Predecessors | Baseline start | Baseline finish | Baseline duration | Baseline 1 start | Baseline 1 finish | Total slack | Free slack | Resources | Work | Cost | Baseline cost |
| --- | --- | --- | --- | --- | --- | --- | --- | --- | --- | --- | --- | --- | --- | --- | --- | --- | --- | --- |
| 51 | 3.2 | **Implement** |  | 8d? | 2012-03-16 | 2012-03-24 |  | 2012-03-16 | 2012-03-24 | 8d? | 2012-03-16 | 2012-03-21 | 21.33d | 0d |  | 110.4h | 5,056.66 | 5,056.66 |
| 52 | 3.2.1 | Content creation |  | 48h? | 2012-03-20 | 2012-03-22 | 48 | 2012-03-20 | 2012-03-22 | 48h? | 2012-03-18 | 2012-03-20 | 23.33d |  | Mark Robinson [20%]; Thomas Hughes [20%] | 19.2h | 827.9 | 827.9 |
| 53 | 3.2.2 | Code creation |  | 96h? | 2012-03-20 | 2012-03-24 | 46, 47 | 2012-03-20 | 2012-03-24 | 96h? | 2012-03-18 | 2012-03-21 | 21.33d | 0d | Matt Ryder [75%] | 72h | 3,229.2 | 3,229.2 |
| 54 | 3.2.3 | Graphics creation |  | 96h? | 2012-03-16 | 2012-03-20 |  | 2012-03-16 | 2012-03-20 | 96h? | 2012-03-16 | 2012-03-19 | 25.33d |  | Peter Ellsum [20%] | 19.2h | 999.55 | 999.55 |
| 55 | 3.3 | **Test** |  | 6d? | 2012-03-24 | 2012-03-30 |  | 2012-03-24 | 2012-03-30 | 6d? | 2012-03-21 | 2012-03-25 | 21.33d |  |  | 196.8h | 9,471.07 | 9,471.07 |
| 56 | 3.3.1 | Test plan |  | 48h? | 2012-03-24 | 2012-03-26 | 53 | 2012-03-24 | 2012-03-26 | 48h? | 2012-03-21 | 2012-03-22 | 31.33d |  | Mark Robinson [25%]; Matt Ryder [25%]; Peter Ellsum [25%] | 36h | 1,780.44 | 1,780.44 |
| 57 | 3.3.2 | Technical Testing |  | 96h? | 2012-03-24 | 2012-03-28 | 51 | 2012-03-24 | 2012-03-28 | 96h? | 2012-03-21 | 2012-03-23 | 21.33d | 0d | Peter Ellsum [60%]; Matt Ryder [60%] | 115.2h | 5,582.02 | 5,582.02 |
| 58 | 3.3.3 | Usability testing |  | 48h? | 2012-03-24 | 2012-03-26 | 51 | 2012-03-24 | 2012-03-26 | 48h? | 2012-03-21 | 2012-03-23 | 23.33d | 2d | Mark Robinson [20%] | 9.6h | 494.02 | 494.02 |
| 59 | 3.3.4 | Implementation corrections |  | 48h? | 2012-03-28 | 2012-03-30 | 57, 58 | 2012-03-28 | 2012-03-30 | 48h? | 2012-03-23 | 2012-03-25 | 21.33d | 0d | Matt Ryder [75%] | 36h | 1,614.6 | 1,614.6 |
| 60 | 3.4 | **Evaluate** |  | 6d? | 2012-03-30 | 2012-04-05 |  | 2012-03-30 | 2012-04-05 | 6d? | 2012-03-25 | 2012-03-27 | 21.33d |  |  | 120h | 5,486.4 | 5,486.4 |
| 61 | 3.4.1 | Project evaluation |  | 3.33d? | 2012-04-01 | 2012-04-05 | 62, 63 | 2012-04-01 | 2012-04-05 | 3.33d? | 2012-03-26 | 2012-03-27 | 21.33d |  | Thomas Hughes [30%] | 24h | 834.72 | 834.72 |
| 62 | 3.4.2 | Maintainance documentation |  | 48h | 2012-03-30 | 2012-04-01 | 59 | 2012-03-30 | 2012-04-01 | 48h | 2012-03-25 | 2012-03-26 | 22d | 0.67d | Matt Ryder | 48h | 2,152.8 | 2,152.8 |
| 63 | 3.4.3 | User documentation |  | 64h | 2012-03-30 | 2012-04-01 | 59 | 2012-03-30 | 2012-04-01 | 64h | 2012-03-25 | 2012-03-26 | 21.33d | 0d | Peter Ellsum [75%] | 48h | 2,498.88 | 2,498.88 |
| 64 | 3.5 | Phase 3 deadline | milestone, manual | 0d | 2012-04-26 | 2012-04-26 |  | 2012-04-26 | 2012-04-26 | 0d | 2012-04-26 | 2012-04-26 |  |  |  |  |  |  |
| 65 | 4 | **Phase 4** |  | 41.33d | 2012-03-16 | 2012-04-26 |  | 2012-03-16 | 2012-04-26 | 41.33d | 2012-03-16 | 2012-04-26 |  |  |  | 76.8h | 3,910.81 | 3,910.81 |
| 66 | 4.1 | Phase 4 deadline | milestone, manual | 0d | 2012-04-26 | 2012-04-26 |  | 2012-04-26 | 2012-04-26 | 0d | 2012-04-26 | 2012-04-26 |  |  |  |  |  |  |
| 67 | 4.2 | **Presentation** |  | 3d | 2012-03-16 | 2012-03-19 |  | 2012-03-16 | 2012-03-19 | 3d |  |  | 0d |  |  | 52.8h | 2,826.09 | 2,826.09 |
| 68 | 4.2.1 | Produce presentation | manual | 72h | 2012-03-16 | 2012-03-19 |  | 2012-03-16 | 2012-03-19 | 72h | 2012-03-16 | 2012-03-17 |  |  | Mark Robinson [20%]; Matt Ryder [20%]; Peter Ellsum [20%] | 43.2h | 2,136.53 | 2,136.53 |
| 69 | 4.2.2 | Present presentation | manual | 24h | 2012-03-16 | 2012-03-17 |  | 2012-03-16 | 2012-03-17 | 24h |  |  |  |  | Client visit [0.1%]; Matt Ryder [10%]; Peter Ellsum [10%]; Mark Robinson [10%]; Thomas Hughes [10%] | 9.6h | 689.56 | 689.56 |
| 70 | 4.3 | Installation | manual | 24h | 2012-04-25 | 2012-04-26 |  | 2012-04-25 | 2012-04-26 | 24h |  |  |  |  | Client visit [0.1%]; Thomas Hughes | 24h | 1,084.72 | 1,084.72 |
